| id | phase_id | component_id | section_id | name | trade | kind | duration_days | crew_size | pre_construction_offset_working_days | lead_up_working_days | derived_from | scheduled_start | scheduled_end | earliest_start | latest_start | float_days | status | lead_time_days | edit_notes | binding_successors_of_this | depends_on | binding_predecessors |
| --- | --- | --- | --- | --- | --- | --- | --- | --- | --- | --- | --- | --- | --- | --- | --- | --- | --- | --- | --- | --- | --- | --- |
| general.permitting | pre_construction | permits_and_planning | general_conditions | Pull building permit | general | work | 1 | 1 | 15 | 2 | general_conditions 4A 1-day work task, walk-in 3 weeks before on-site start. | 2026-09-21 | 2026-09-21 | 2026-09-21 | 2026-10-13 | 16.5 | not_started |  |  |  |  |  |
| general.site_verification | pre_construction | permits_and_planning | general_conditions | Site verification against plans | general | work | 1 | 2 | 20 | 1 | general_conditions Pre-con site verification per scope. | 2026-09-14 | 2026-09-14 | 2026-09-14 | 2027-02-12 | 102 | not_started |  |  |  |  |  |
| permit.tdec_septic | pre_construction | tdec_septic | general_conditions | TDEC septic permit process | general | lead_time | 0 | 0 | 24 | 0 | general_conditions TDEC Scope explicitly calls out TDEC septic inspection; 6-week window with mandatory 30 working day offset. | 2026-09-08 | 2026-10-09 | 2026-09-08 | 2026-09-22 | 10 | not_started | 33 | 2026-07-15T18:18:13.267Z shorter tdec job lead_time → 33 cal-d · pc_offset → 24wd, 2026-07-15T18:18:47.080Z tdec shorter job lead_time → 33 cal-d · pc_offset → 24wd |  |  |  |
| prep.amperage_check | pre_construction | amperage_check | electrical | Verify existing service amperage for subpanel | general | work | 0.5 | 1 | 15 | 1 | electrical subpanel-amperage 100A subpanel in scope — must verify main service capacity. | 2026-09-21 | 2026-09-21 | 2026-09-21 | 2026-11-18 | 40 | not_started |  |  | order.subpanel FS 0 2026-10-12 2026-10-12 |  |  |
| checkpoint.selections_finalized | pre_construction | checkpoints | general_conditions | Customer selections finalized | general | milestone | 0 | 0 | 15 | 5 | general_conditions 4P Selections lock 3 weeks before on-site start; gates finish material orders. | 2026-09-21 | 2026-09-21 | 2026-09-21 | 2026-11-03 | 31.5 | not_started |  |  | order.exterior_door FS 0 2026-10-12 2026-10-12, order.flooring FS 0 2026-10-12 2026-10-12, order.paint FS 0 2026-10-12 2026-10-12, order.tile FS 0 2026-10-12 2026-10-12, order.vanity_fixtures FS 0 2026-10-12 2026-10-12, order.windows FS 0 2026-10-12 2026-10-12 |  |  |
| checkpoint.equipment_confirmed_demo | pre_construction | checkpoints | demolition_site_work | Confirm demo equipment reserved | general | milestone | 0 | 0 | 10 | 2 | demolition_site_work 4O 2 weeks before demo, PM confirms dumpster and mini-ex. | 2026-09-28 | 2026-09-28 | 2026-09-28 | 2026-10-14 | 12 | not_started |  |  | equipment.dumpster_arrive FS 0 2026-10-12 2026-10-12 |  |  |
| checkpoint.equipment_confirmed_foundation | pre_construction | checkpoints | excavation_foundation | Confirm foundation equipment reserved | general | milestone | 0 | 0 | 10 | 2 | excavation_foundation 4O 2 weeks before excavation, confirm mini-ex reserved. | 2026-09-28 | 2026-09-28 | 2026-09-28 | 2026-10-23 | 19.5 | not_started |  |  |  |  |  |
| order.windows | procurement_long_leads | procurement_windows | windows_doors_weatherproofing | Order windows | general | work | 0.5 | 1 |  | 2 | windows_doors_weatherproofing 4R PM places windows order (3-task pattern step 1). | 2026-10-12 | 2026-10-12 | 2026-10-12 | 2026-11-03 | 16.5 | not_started |  |  | wait.windows FS 0 2026-10-13 2026-11-02 | checkpoint.selections_finalized FS | checkpoint.selections_finalized FS 0 |
| wait.windows | procurement_long_leads | procurement_windows | windows_doors_weatherproofing | Windows supplier lead time | general | lead_time | 0 | 0 |  | 0 | windows_doors_weatherproofing 4R Stock windows 21-day supplier delivery. | 2026-10-13 | 2026-11-02 | 2026-10-13 | 2026-11-04 | 16 | not_started | 21 |  | checkpoint.windows_arrived FS 0 2026-11-03 2026-11-03 | order.windows FS | order.windows FS 0 |
| checkpoint.windows_arrived | procurement_long_leads | procurement_windows | windows_doors_weatherproofing | Windows delivered | general | milestone | 0 | 0 |  | 0 | windows_doors_weatherproofing 4R Windows on site. | 2026-11-03 | 2026-11-03 | 2026-11-03 | 2026-12-01 | 16 | not_started |  |  |  | wait.windows FS | wait.windows FS 0 |
| order.exterior_door | procurement_long_leads | procurement_windows | windows_doors_weatherproofing | Order exterior door | general | work | 0.5 | 1 |  | 2 | windows_doors_weatherproofing 4R Exterior door order. | 2026-10-12 | 2026-10-12 | 2026-10-12 | 2026-11-03 | 16.5 | not_started |  |  | wait.exterior_door FS 0 2026-10-13 2026-11-02 | checkpoint.selections_finalized FS | checkpoint.selections_finalized FS 0 |
| wait.exterior_door | procurement_long_leads | procurement_windows | windows_doors_weatherproofing | Exterior door supplier lead | general | lead_time | 0 | 0 |  | 0 | windows_doors_weatherproofing 4R Stock exterior door 21-day lead. | 2026-10-13 | 2026-11-02 | 2026-10-13 | 2026-11-04 | 16 | not_started | 21 |  | checkpoint.exterior_door_arrived FS 0 2026-11-03 2026-11-03 | order.exterior_door FS | order.exterior_door FS 0 |
| checkpoint.exterior_door_arrived | procurement_long_leads | procurement_windows | windows_doors_weatherproofing | Exterior door delivered | general | milestone | 0 | 0 |  | 0 | windows_doors_weatherproofing 4R Door on site. | 2026-11-03 | 2026-11-03 | 2026-11-03 | 2026-12-01 | 16 | not_started |  |  |  | wait.exterior_door FS | wait.exterior_door FS 0 |
| order.lvl | procurement_long_leads | procurement_lvl | structural_modifications | Order LVL beam | general | work | 0.5 | 1 |  | 2 | structural_modifications 4R Order 3-ply 14" LVL. | 2026-10-12 | 2026-10-12 | 2026-10-12 | 2027-01-27 | 70 | not_started |  |  | wait.lvl FS 0 2026-10-13 2026-10-26 |  |  |
| wait.lvl | procurement_long_leads | procurement_lvl | structural_modifications | LVL supplier lead | general | lead_time | 0 | 0 |  | 0 | structural_modifications LVL-safety-buffer Standard LVL 1 week; default to 14 days for market fluctuation. | 2026-10-13 | 2026-10-26 | 2026-10-13 | 2027-01-27 | 69.5 | not_started | 14 |  | checkpoint.lvl_arrived FS 0 2026-10-27 2026-10-27 | order.lvl FS | order.lvl FS 0 |
| checkpoint.lvl_arrived | procurement_long_leads | procurement_lvl | structural_modifications | LVL delivered | general | milestone | 0 | 0 |  | 0 | structural_modifications 4R LVL on site. | 2026-10-27 | 2026-10-27 | 2026-10-27 | 2027-02-10 | 69.5 | not_started |  |  | structural.install_lvl FS 0 2026-10-27 2026-10-28 | wait.lvl FS | wait.lvl FS 0 |
| order.subpanel | procurement_long_leads | procurement_subpanel | electrical | Order 100A subpanel | general | work | 0.5 | 1 |  | 2 | electrical 4R Order subpanel after amperage verified. | 2026-10-12 | 2026-10-12 | 2026-10-12 | 2026-11-18 | 25.5 | not_started |  |  | wait.subpanel FS 0 2026-10-13 2026-10-22 | prep.amperage_check FS | prep.amperage_check FS 0 |
| wait.subpanel | procurement_long_leads | procurement_subpanel | electrical | Subpanel supplier lead | general | lead_time | 0 | 0 |  | 0 | electrical 4R Electrical panel 7-14 day lead. | 2026-10-13 | 2026-10-22 | 2026-10-13 | 2026-11-19 | 25 | not_started | 10 |  | checkpoint.subpanel_arrived FS 0 2026-10-23 2026-10-23 | order.subpanel FS | order.subpanel FS 0 |
| checkpoint.subpanel_arrived | procurement_long_leads | procurement_subpanel | electrical | Subpanel delivered | general | milestone | 0 | 0 |  | 0 | electrical 4R Panel on site. | 2026-10-23 | 2026-10-23 | 2026-10-23 | 2026-12-03 | 25 | not_started |  |  |  | wait.subpanel FS | wait.subpanel FS 0 |
| order.minisplit | procurement_long_leads | procurement_minisplit | hvac | Order mini-split unit | general | work | 0.5 | 1 |  | 2 | hvac 4R Order mini-split. | 2026-10-12 | 2026-10-12 | 2026-10-12 | 2027-01-14 | 61.5 | not_started |  |  | wait.minisplit FS 0 2026-10-13 2026-10-26 |  |  |
| wait.minisplit | procurement_long_leads | procurement_minisplit | hvac | Mini-split supplier lead | general | lead_time | 0 | 0 |  | 0 | hvac 4R Mini-split 7-14 day lead. | 2026-10-13 | 2026-10-26 | 2026-10-13 | 2027-01-15 | 61 | not_started | 14 |  | checkpoint.minisplit_arrived FS 0 2026-10-27 2026-10-27 | order.minisplit FS | order.minisplit FS 0 |
| checkpoint.minisplit_arrived | procurement_long_leads | procurement_minisplit | hvac | Mini-split delivered | general | milestone | 0 | 0 |  | 0 | hvac 4R Mini-split on site. | 2026-10-27 | 2026-10-27 | 2026-10-27 | 2027-01-29 | 61 | not_started |  |  |  | wait.minisplit FS | wait.minisplit FS 0 |
| order.tankless | procurement_long_leads | procurement_tankless | hvac | Order tankless water heater | general | work | 0.5 | 1 |  | 2 | hvac 4R Tankless WH order. | 2026-10-12 | 2026-10-12 | 2026-10-12 | 2026-11-17 | 24 | not_started |  |  | wait.tankless FS 0 2026-10-13 2026-10-26 |  |  |
| wait.tankless | procurement_long_leads | procurement_tankless | hvac | Tankless WH supplier lead | general | lead_time | 0 | 0 |  | 0 | hvac 4R Tankless 7-14 day lead. | 2026-10-13 | 2026-10-26 | 2026-10-13 | 2026-11-17 | 23.5 | not_started | 14 |  | checkpoint.tankless_arrived FS 0 2026-10-27 2026-10-27 | order.tankless FS | order.tankless FS 0 |
| checkpoint.tankless_arrived | procurement_long_leads | procurement_tankless | hvac | Tankless WH delivered | general | milestone | 0 | 0 |  | 0 | hvac 4R Tankless on site. | 2026-10-27 | 2026-10-27 | 2026-10-27 | 2026-12-03 | 23.5 | not_started |  |  |  | wait.tankless FS | wait.tankless FS 0 |
| order.tile | procurement_long_leads | procurement_tile | master_bath | Order master bath tile | general | work | 0.5 | 1 |  | 2 | master_bath 4R Custom tile 14-21 day lead. | 2026-10-12 | 2026-10-12 | 2026-10-12 | 2026-12-10 | 39 | not_started |  |  | wait.tile FS 0 2026-10-13 2026-11-02 | checkpoint.selections_finalized FS | checkpoint.selections_finalized FS 0 |
| wait.tile | procurement_long_leads | procurement_tile | master_bath | Tile supplier lead | general | lead_time | 0 | 0 |  | 0 | master_bath 4R Custom tile supplier window. | 2026-10-13 | 2026-11-02 | 2026-10-13 | 2026-12-10 | 38.5 | not_started | 21 |  | checkpoint.tile_arrived FS 0 2026-11-03 2026-11-03 | order.tile FS | order.tile FS 0 |
| checkpoint.tile_arrived | procurement_long_leads | procurement_tile | master_bath | Tile delivered | general | milestone | 0 | 0 |  | 0 | master_bath 4R Tile on site. | 2026-11-03 | 2026-11-03 | 2026-11-03 | 2027-01-05 | 38.5 | not_started |  |  |  | wait.tile FS | wait.tile FS 0 |
| order.flooring | procurement_long_leads | procurement_flooring | interior_finish | Order flooring (LVP) | general | work | 0.5 | 1 |  | 2 | interior_finish 4R Order flooring. | 2026-10-12 | 2026-10-12 | 2026-10-12 | 2027-01-08 | 57.5 | not_started |  |  | wait.flooring FS 0 2026-10-13 2026-10-22 | checkpoint.selections_finalized FS | checkpoint.selections_finalized FS 0 |
| wait.flooring | procurement_long_leads | procurement_flooring | interior_finish | Flooring supplier lead | general | lead_time | 0 | 0 |  | 0 | interior_finish 4R Standard LVP delivery window. | 2026-10-13 | 2026-10-22 | 2026-10-13 | 2027-01-11 | 57 | not_started | 10 |  | checkpoint.flooring_arrived FS 0 2026-10-23 2026-10-23 | order.flooring FS | order.flooring FS 0 |
| checkpoint.flooring_arrived | procurement_long_leads | procurement_flooring | interior_finish | Flooring delivered | general | milestone | 0 | 0 |  | 0 | interior_finish 4R Flooring on site. | 2026-10-23 | 2026-10-23 | 2026-10-23 | 2027-01-21 | 57 | not_started |  |  |  | wait.flooring FS | wait.flooring FS 0 |
| order.paint | procurement_long_leads | procurement_paint | interior_finish | Order paint | general | work | 1 | 1 |  | 0 | interior_finish 4R-short-lead Paint short lead — collapse to single order task 1 week before phase 1. | 2026-10-12 | 2026-10-12 | 2026-10-12 | 2026-12-31 | 52.5 | not_started |  |  |  | checkpoint.selections_finalized FS | checkpoint.selections_finalized FS 0 |
| order.vanity_fixtures | procurement_long_leads | procurement_vanity | master_bath | Order vanity & bath fixtures | general | work | 0.5 | 1 |  | 2 | master_bath 4R Vanity + faucets + toilet. | 2026-10-12 | 2026-10-12 | 2026-10-12 | 2027-01-12 | 59.5 | not_started |  |  | wait.vanity_fixtures FS 0 2026-10-13 2026-10-26 | checkpoint.selections_finalized FS | checkpoint.selections_finalized FS 0 |
| wait.vanity_fixtures | procurement_long_leads | procurement_vanity | master_bath | Vanity/fixtures supplier lead | general | lead_time | 0 | 0 |  | 0 | master_bath 4R Standard vanity/fixtures 2-week lead. | 2026-10-13 | 2026-10-26 | 2026-10-13 | 2027-01-13 | 59 | not_started | 14 |  | checkpoint.vanity_fixtures_arrived FS 0 2026-10-27 2026-10-27 | order.vanity_fixtures FS | order.vanity_fixtures FS 0 |
| checkpoint.vanity_fixtures_arrived | procurement_long_leads | procurement_vanity | master_bath | Vanity & fixtures delivered | general | milestone | 0 | 0 |  | 0 | master_bath 4R On site. | 2026-10-27 | 2026-10-27 | 2026-10-27 | 2027-01-27 | 59 | not_started |  |  |  | wait.vanity_fixtures FS | wait.vanity_fixtures FS 0 |
| order.shower_glass | procurement_long_leads | procurement_shower_glass | master_bath | Template & order shower glass | general | work | 0.5 | 1 |  | 1 | master_bath 4R Glass templated after tile complete. | 2027-01-15 | 2027-01-15 | 2027-01-15 | 2027-01-15 | 0.5 | not_started |  |  | wait.shower_glass FS 0 2027-01-18 2027-01-27 | tile.grout_seal FS | tile.grout_seal FS 0 |
| wait.shower_glass | procurement_long_leads | procurement_shower_glass | master_bath | Shower glass fab lead | general | lead_time | 0 | 0 |  | 0 | master_bath 4R Glass fab 7-14 days from template. | 2027-01-18 | 2027-01-27 | 2027-01-18 | 2027-01-18 | 0 | not_started | 10 |  | checkpoint.shower_glass_arrived FS 0 2027-01-28 2027-01-28 | order.shower_glass FS | order.shower_glass FS 0 |
| checkpoint.shower_glass_arrived | procurement_long_leads | procurement_shower_glass | master_bath | Shower glass delivered | general | milestone | 0 | 0 |  | 0 | master_bath 4R Glass on site. | 2027-01-28 | 2027-01-28 | 2027-01-28 | 2027-01-28 | 0 | not_started |  |  | plumbing.finish FS 0 2027-01-28 2027-01-29 | wait.shower_glass FS | wait.shower_glass FS 0 |
| equipment.dumpster_arrive | site_prep | site_setup | demolition_site_work | Dumpster delivered | general | work | 0.5 | 1 |  | 0 | demolition_site_work 4O Dumpster lands day before demo. | 2026-10-12 | 2026-10-12 | 2026-10-12 | 2026-10-14 | 2 | not_started |  |  | general.site_setup FS 0 2026-10-13 2026-10-13 | checkpoint.equipment_confirmed_demo FS | checkpoint.equipment_confirmed_demo FS 0 |
| general.site_setup | site_prep | site_setup | general_conditions | Site setup, protection, staging | general | work | 1 | 2 |  | 2 | general_conditions Site prep on day 1. | 2026-10-13 | 2026-10-13 | 2026-10-13 | 2026-10-14 | 1.5 | not_started |  |  | prep.electrical_disconnect_relocate FS 0 2026-10-14 2026-10-14, prep.heat_pump_relocate FS 0 2026-10-14 2026-10-14 | general.permitting FS, equipment.dumpster_arrive FS | equipment.dumpster_arrive FS 0 |
| prep.heat_pump_relocate | site_prep | prep_work_before_demo | demolition_site_work | Relocate existing heat pump | hvac | work | 1 | 2 |  | 1 | demolition_site_work 4K Heat pump must be moved before demo per addition rules. | 2026-10-14 | 2026-10-14 | 2026-10-14 | 2026-10-15 | 1.5 | not_started |  |  | demo.sawcut_walkway FS 2 2026-10-19 2026-10-19 | general.site_setup FS | general.site_setup FS 0 |
| prep.electrical_disconnect_relocate | site_prep | prep_work_before_demo | demolition_site_work | Relocate electrical disconnect | electrical | work | 0.5 | 2 |  | 1 | demolition_site_work 4K Disconnect relocated in prep phase, not demo phase. | 2026-10-14 | 2026-10-14 | 2026-10-14 | 2026-10-16 | 2 | not_started |  |  |  | general.site_setup FS | general.site_setup FS 0 |
| demo.sawcut_walkway | demo_and_protection | main_demo | demolition_site_work | Sawcut and remove concrete walkway | demo | work | 1 | 3 |  | 2 | demolition_site_work Concrete removal + railroad ties + site obstructions. | 2026-10-19 | 2026-10-19 | 2026-10-19 | 2026-10-20 | 1.5 | not_started |  |  | demo.interior_bearing_wall FS 0 2026-10-20 2026-10-20, demo.site_obstructions SS 0 2026-10-19 2026-10-19 | prep.heat_pump_relocate FS 2, prep.electrical_disconnect_relocate FS 2 | prep.heat_pump_relocate FS 2 |
| demo.site_obstructions | demo_and_protection | main_demo | demolition_site_work | Remove railroad ties and site obstructions | demo | work | 1 | 3 |  | 0 | demolition_site_work Runs concurrent with sawcut. | 2026-10-19 | 2026-10-19 | 2026-10-19 | 2026-10-21 | 2.5 | not_started |  |  |  | demo.sawcut_walkway SS 0 | demo.sawcut_walkway SS 0 |
| demo.interior_bearing_wall | demo_and_protection | main_demo | structural_modifications | Expose existing load-bearing wall for LVL | demo | work | 1 | 3 |  | 1 | structural_modifications LVL-subchain Interior demo to expose bearing wall for LVL install. | 2026-10-20 | 2026-10-20 | 2026-10-20 | 2026-10-21 | 1.5 | not_started |  |  | demo.haul_out FS 0 2026-10-21 2026-10-21, structural.temp_shoring FS 0 2026-10-21 2026-10-21 | demo.sawcut_walkway FS | demo.sawcut_walkway FS 0 |
| demo.haul_out | demo_and_protection | main_demo | demolition_site_work | Demo haul-out | demo | work | 1 | 3 |  | 0 | demolition_site_work Final haul-out day; multiple dump runs. | 2026-10-21 | 2026-10-21 | 2026-10-21 | 2026-10-22 | 1.5 | not_started |  |  | equipment.miniex_arrive FS 0 2026-10-22 2026-10-22, retrofit.hall_bath_window_infill FS 0 2026-10-22 2026-10-22 | demo.site_obstructions FS, demo.interior_bearing_wall FS | demo.interior_bearing_wall FS 0 |
| equipment.miniex_arrive | structural_and_shell | foundation | excavation_foundation | Mini-ex delivered | general | work | 0.5 | 1 |  | 0 | excavation_foundation 4O Mini-ex the day before excavation. | 2026-10-22 | 2026-10-22 | 2026-10-22 | 2026-10-23 | 1.5 | not_started |  |  | excavation.dig FS 0 2026-10-23 2026-10-26 | checkpoint.equipment_confirmed_foundation FS, demo.haul_out FS | demo.haul_out FS 0 |
| excavation.dig | structural_and_shell | foundation | excavation_foundation | Excavate for footings and slab | excavation | work | 2 | 2 |  | 1 | excavation_foundation TDEC Gated on TDEC permit and demo complete. | 2026-10-23 | 2026-10-26 | 2026-10-23 | 2026-10-26 | 1 | not_started |  |  | foundation.form_and_prep FS 0 2026-10-27 2026-10-28 | equipment.miniex_arrive FS, permit.tdec_septic FS | equipment.miniex_arrive FS 0 |
| foundation.form_and_prep | structural_and_shell | foundation | excavation_foundation | Form footings, gravel base, vapor barrier, rebar | concrete | work | 2 | 4 |  | 1 | excavation_foundation 4B Combined footing+slab prep in one task (monolithic pattern). | 2026-10-27 | 2026-10-28 | 2026-10-27 | 2026-10-28 | 1 | not_started |  |  | inspect.footing FS 1 2026-10-30 2026-10-30 | excavation.dig FS | excavation.dig FS 0 |
| inspect.footing | structural_and_shell | foundation | excavation_foundation | Footing inspection | inspector | inspection | 1 | 1 |  | 1 | excavation_foundation 4B Single footing inspection covers both footings and slab prep. | 2026-10-30 | 2026-10-30 | 2026-10-30 | 2026-11-02 | 1 | not_started |  |  | foundation.monolithic_pour FS 0 2026-11-02 2026-11-02 | foundation.form_and_prep FS 1 | foundation.form_and_prep FS 1 |
| foundation.monolithic_pour | structural_and_shell | foundation | excavation_foundation | Monolithic pour (footings + slab) | concrete | work | 1 | 4 |  | 1 | excavation_foundation 4B 12x12 footings + 4" slab in single pour. | 2026-11-02 | 2026-11-02 | 2026-11-02 | 2026-11-03 | 1 | not_started |  |  | foundation.cure FS 0 2026-11-03 2026-11-04 | inspect.footing FS | inspect.footing FS 0 |
| foundation.cure | structural_and_shell | foundation | excavation_foundation | Foundation cure | general | lead_time | 0 | 0 |  | 0 | excavation_foundation 4B 2-day cure before framing loads applied. | 2026-11-03 | 2026-11-04 | 2026-11-03 | 2026-11-04 | 1 | not_started | 2 |  | framing.floor_system FS 0 2026-11-05 2026-11-12 | foundation.monolithic_pour FS | foundation.monolithic_pour FS 0 |
| framing.floor_system | structural_and_shell | framing | framing | Basement walls, floor system, subfloor | framing | work | 4 | 3 |  | 2 | framing Basement 2x4 walls + floor system + glued subfloor. | 2026-11-05 | 2026-11-12 | 2026-11-05 | 2026-11-06 | 1 | not_started |  |  | framing.exterior_walls FS 0 2026-11-13 2026-11-19 | foundation.cure FS | foundation.cure FS 0 |
| structural.temp_shoring | structural_and_shell | lvl_subchain | structural_modifications | Temporary shoring for LVL | framing | work | 1 | 2 |  | 1 | structural_modifications LVL-subchain Temp shoring after wall exposed. Independent of new framing. | 2026-10-21 | 2026-10-21 | 2026-10-21 | 2027-02-09 | 72.5 | not_started |  |  |  | demo.interior_bearing_wall FS | demo.interior_bearing_wall FS 0 |
| structural.install_lvl | structural_and_shell | lvl_subchain | structural_modifications | Install 3-ply 14" LVL beam | framing | work | 2 | 3 |  | 1 | structural_modifications LVL-subchain LVL install after shoring + material on site. | 2026-10-27 | 2026-10-28 | 2026-10-27 | 2027-02-10 | 69.5 | not_started |  |  | structural.remove_temp_shoring FS 0 2026-10-29 2026-10-29 | structural.temp_shoring FS, checkpoint.lvl_arrived FS | checkpoint.lvl_arrived FS 0 |
| structural.remove_temp_shoring | structural_and_shell | lvl_subchain | structural_modifications | Remove temporary shoring | framing | work | 0.5 | 2 |  | 0 | structural_modifications LVL-subchain Shoring removed after LVL bears load. | 2026-10-29 | 2026-10-29 | 2026-10-29 | 2027-02-12 | 69.5 | not_started |  |  |  | structural.install_lvl FS | structural.install_lvl FS 0 |
| framing.exterior_walls | structural_and_shell | framing | framing | Exterior & interior walls + elevator shaft framing | framing | work | 5 | 3 |  | 1 | framing 2x4 walls + 4x4 elevator shaft framed. | 2026-11-13 | 2026-11-19 | 2026-11-13 | 2026-11-16 | 1 | not_started |  |  | exterior.wrb_sheathing FS 0 2026-11-20 2026-11-20, framing.roof FS 0 2026-11-20 2026-11-25 | framing.floor_system FS | framing.floor_system FS 0 |
| framing.roof | structural_and_shell | framing | roof_framing_roofing | Roof framing (stick-frame) | framing | work | 4 | 3 |  | 1 | roof_framing_roofing trusses-conditional Stick-frame default; scope ambiguous (truss OR rafter TBD). | 2026-11-20 | 2026-11-25 | 2026-11-20 | 2026-11-23 | 1 | not_started |  |  | framing.sheathing FS 0 2026-11-30 2026-11-30, roof.concealed_buffer SS 1 2026-11-23 2026-11-25, windows.install FS 0 2026-11-30 2026-12-01 | framing.exterior_walls FS | framing.exterior_walls FS 0 |
| roof.concealed_buffer | structural_and_shell | roof_tie_in | roof_framing_roofing | Concealed roof tie-in discovery buffer | framing | lead_time | 0 | 0 |  | 0 | roof_framing_roofing concealed-tie-in 3-day buffer for concealed conditions at roof tie-in to existing 6/12 roof. | 2026-11-23 | 2026-11-25 | 2026-11-23 | 2027-02-10 | 52 | not_started | 3 |  |  | framing.roof SS 1 | framing.roof SS 1 |
| framing.sheathing | structural_and_shell | framing | roof_framing_roofing | Roof sheathing | framing | work | 1 | 3 |  | 0 | roof_framing_roofing Sheathing before underlayment. | 2026-11-30 | 2026-11-30 | 2026-11-30 | 2026-12-01 | 1 | not_started |  |  | roofing.underlayment FS 0 2026-12-01 2026-12-01 | framing.roof FS | framing.roof FS 0 |
| roofing.underlayment | structural_and_shell | roofing | roof_framing_roofing | Synthetic underlayment + drip edge | roofing | work | 1 | 3 |  | 1 | roof_framing_roofing Weatherproof underlayment before shingles. | 2026-12-01 | 2026-12-01 | 2026-12-01 | 2026-12-02 | 1 | not_started |  |  | roofing.shingles FS 0 2026-12-02 2026-12-02, electrical.rough_in FS 0 2026-12-02 2026-12-04, plumbing.tank_set FS 0 2026-12-02 2026-12-02 | framing.sheathing FS | framing.sheathing FS 0 |
| windows.install | structural_and_shell | envelope | windows_doors_weatherproofing | Install windows & exterior door | windows_doors | work | 2 | 2 |  | 1 | windows_doors_weatherproofing 4J Windows install immediately after roof framed; parallel with underlayment. | 2026-11-30 | 2026-12-01 | 2026-11-30 | 2026-12-01 | 1 | not_started |  |  | electrical.rough_in FS 0 2026-12-02 2026-12-04, plumbing.tank_set FS 0 2026-12-02 2026-12-02 | framing.roof FS, checkpoint.windows_arrived FS, checkpoint.exterior_door_arrived FS | framing.roof FS 0 |
| roofing.shingles | structural_and_shell | roofing | roof_framing_roofing | Shingles + ridge vent + flashing | roofing | work | 1 | 3 |  | 0 | roof_framing_roofing Small addition roof, 1 day per Will's rule. | 2026-12-02 | 2026-12-02 | 2026-12-02 | 2027-02-08 | 45 | not_started |  |  | hvac.wh_vent_extend FS 0 2026-12-03 2026-12-03, milestone.dried_in FS 0 2026-12-03 2026-12-03 | roofing.underlayment FS | roofing.underlayment FS 0 |
| exterior.wrb_sheathing | structural_and_shell | exterior_finishes | exterior_finishes | Exterior sheathing & WRB | siding | work | 1 | 3 |  | 1 | exterior_finishes WRB before siding. | 2026-11-20 | 2026-11-20 | 2026-11-20 | 2027-02-08 | 51 | not_started |  |  |  | framing.exterior_walls FS | framing.exterior_walls FS 0 |
| milestone.dried_in | structural_and_shell | roofing | roof_framing_roofing | Building dried in | general | milestone | 0 | 0 |  | 0 | roof_framing_roofing Full dried-in milestone gates exterior siding. | 2026-12-03 | 2026-12-03 | 2026-12-03 | 2027-02-09 | 45 | not_started |  |  | exterior.siding_trim_gutters FS 0 2026-12-03 2026-12-08 | roofing.shingles FS, windows.install FS, exterior.wrb_sheathing FS | roofing.shingles FS 0 |
| exterior.siding_trim_gutters | structural_and_shell | exterior_finishes | exterior_finishes | Vinyl siding, fascia, soffit, gutters | siding | work | 4 | 3 |  | 1 | exterior_finishes same-crew-exterior Siding + trim + gutters same crew, continuous block. Runs parallel to interior. | 2026-12-03 | 2026-12-08 | 2026-12-03 | 2027-02-09 | 45 | not_started |  |  |  | milestone.dried_in FS | milestone.dried_in FS 0 |
| electrical.rough_in | rough_trades | rough_electrical | electrical | Rough electrical (subpanel + circuits) | electrical | work | 3 | 2 |  | 1 | electrical 4I MEPs gated on underlayment + windows, not dried-in. | 2026-12-02 | 2026-12-04 | 2026-12-02 | 2026-12-03 | 1 | not_started |  |  | plumbing.rough_in SS 1 2026-12-03 2026-12-07 | roofing.underlayment FS, windows.install FS, checkpoint.subpanel_arrived FS | roofing.underlayment FS 0, windows.install FS 0 |
| plumbing.tank_set | rough_trades | rough_plumbing | hvac | Set tankless water heater | plumbing | work | 0.5 | 2 |  | 1 | hvac 4H Tankless set before plumbing rough-in. | 2026-12-02 | 2026-12-02 | 2026-12-02 | 2026-12-03 | 1.5 | not_started |  |  |  | checkpoint.tankless_arrived FS, roofing.underlayment FS, windows.install FS | roofing.underlayment FS 0, windows.install FS 0 |
| plumbing.rough_in | rough_trades | rough_plumbing | plumbing | Rough plumbing (master bath + W/D relocation) | plumbing | work | 3 | 2 |  | 1 | plumbing 4G, 4H Plumbing after tank set; runs parallel with electrical (SS lag 1). | 2026-12-03 | 2026-12-07 | 2026-12-03 | 2026-12-04 | 1 | not_started |  |  | hvac.minisplit_rough SS 1 2026-12-04 2026-12-04, inspect.rough_bundled FS 1 2026-12-09 2026-12-09 | plumbing.tank_set FS, electrical.rough_in SS 1 | electrical.rough_in SS 1 |
| hvac.minisplit_rough | rough_trades | rough_hvac | hvac | Mini-split line set rough | hvac | work | 0.5 | 1 |  | 0 | hvac 4G, mini-split-rough Mini-split rough is 0.5d/1 person; runs after plumbing SS lag 1. | 2026-12-04 | 2026-12-04 | 2026-12-04 | 2026-12-08 | 2.5 | not_started |  |  |  | plumbing.rough_in SS 1, roofing.underlayment FS, windows.install FS | plumbing.rough_in SS 1 |

| id | phase_id | component_id | section_id | name | trade | kind | duration_days | crew_size | lead_up_working_days | derived_from | scheduled_start | scheduled_end | earliest_start | latest_start | float_days | status | lead_time_days | binding_successors_of_this | depends_on | binding_predecessors |
| --- | --- | --- | --- | --- | --- | --- | --- | --- | --- | --- | --- | --- | --- | --- | --- | --- | --- | --- | --- | --- |
| hvac.wh_vent_extend | rough_trades | rough_hvac | demolition_site_work | Extend existing gas WH vent through new roof | hvac | work | 0.5 | 2 | 1 | demolition_site_work Vent extension through new roof — scope keeps existing WH so no new tank. | 2026-12-03 | 2026-12-03 | 2026-12-03 | 2027-02-12 | 48.5 | not_started |  |  | roofing.shingles FS | roofing.shingles FS 0 |
| inspect.rough_bundled | rough_inspections | rough_inspections | framing | Bundled rough inspection (E/P/M + framing) | inspector | inspection | 1 | 1 | 1 | framing 4C One inspector, one day for E/P/M + framing. | 2026-12-09 | 2026-12-09 | 2026-12-09 | 2026-12-10 | 1 | not_started |  | buffer.post_rough_inspection FS 0 2026-12-10 2026-12-11 | electrical.rough_in FS 1, plumbing.rough_in FS 1, hvac.minisplit_rough FS 1 | plumbing.rough_in FS 1 |
| buffer.post_rough_inspection | rough_inspections | rough_inspections | framing | Post-rough punch-list buffer | general | lead_time | 0 | 0 | 0 | framing 4D 2-day punch buffer after rough inspection. | 2026-12-10 | 2026-12-11 | 2026-12-10 | 2026-12-11 | 1 | not_started | 2 | insulation.air_seal FS 0 2026-12-14 2026-12-14 | inspect.rough_bundled FS | inspect.rough_bundled FS 0 |
| insulation.air_seal | insulation_and_drywall | insulation | insulation_air_sealing | Insulation & air sealing | insulation | work | 1 | 2 | 1 | insulation_air_sealing Insulation 1 day for addition-scale, per Will's baseline. | 2026-12-14 | 2026-12-14 | 2026-12-14 | 2026-12-15 | 1 | not_started |  | inspect.insulation FS 1 2026-12-16 2026-12-16 | buffer.post_rough_inspection FS | buffer.post_rough_inspection FS 0 |
| inspect.insulation | insulation_and_drywall | insulation | insulation_air_sealing | Insulation inspection | inspector | inspection | 1 | 1 | 1 | insulation_air_sealing Standard insulation inspection before drywall. | 2026-12-16 | 2026-12-16 | 2026-12-16 | 2026-12-17 | 1 | not_started |  | equipment.dumpster2_arrive FS 0 2026-12-17 2026-12-17 | insulation.air_seal FS 1 | insulation.air_seal FS 1 |
| equipment.dumpster2_arrive | insulation_and_drywall | drywall | drywall | Second dumpster for drywall | general | work | 0.5 | 1 | 0 | drywall 4O Dumpster swap the day before drywall hangs. | 2026-12-17 | 2026-12-17 | 2026-12-17 | 2026-12-18 | 1 | not_started |  | drywall.consolidated FS 0 2026-12-18 2026-12-31 | inspect.insulation FS | inspect.insulation FS 0 |
| drywall.consolidated | insulation_and_drywall | drywall | drywall | Drywall hang, tape, sand (addition + retrofit) | drywall | work | 8 | 3 | 2 | drywall drywall-consolidate Single hang+finish block for new addition + existing bedroom + hall bath patches. | 2026-12-18 | 2026-12-31 | 2026-12-18 | 2026-12-18 | 0.5 | not_started |  | paint.phase_1 FS 0 2027-01-04 2027-01-04, retrofit.hallway_switch_relocate FS 0 2027-01-04 2027-01-04 | inspect.insulation FS, equipment.dumpster2_arrive FS | equipment.dumpster2_arrive FS 0 |
| paint.phase_1 | insulation_and_drywall | paint_phase1 | interior_finish | Paint phase 1 (prime + ceiling finish) | paint | work | 1 | 2 | 1 | interior_finish 4E 1d covers primer (walls + ceilings) AM + ceiling finish coat PM same day per Will's standard sequence. | 2027-01-04 | 2027-01-04 | 2027-01-04 | 2027-01-04 | 0.5 | not_started |  | tile.shower_substrate FS 0 2027-01-05 2027-01-06 | drywall.consolidated FS, order.paint FS | drywall.consolidated FS 0 |
| tile.shower_substrate | interior_finishes | tile | master_bath | Shower waterproofing + substrate | tile | work | 2 | 2 | 1 | master_bath 4L Kerdi/Wedi substrate before tile setting. | 2027-01-05 | 2027-01-06 | 2027-01-05 | 2027-01-05 | 0.5 | not_started |  | flooring.install FS 0 2027-01-07 2027-01-11, tile.shower_set FS 0 2027-01-07 2027-01-12 | paint.phase_1 FS, checkpoint.tile_arrived FS | paint.phase_1 FS 0 |
| tile.shower_set | interior_finishes | tile | master_bath | Set custom shower tile | tile | work | 4 | 2 | 0 | master_bath Custom wall tile 30 sqft/day, upsized for shower complexity. | 2027-01-07 | 2027-01-12 | 2027-01-07 | 2027-01-07 | 0.5 | not_started |  | tile.grout_seal FS 1 2027-01-14 2027-01-14 | tile.shower_substrate FS | tile.shower_substrate FS 0 |
| tile.grout_seal | interior_finishes | tile | master_bath | Grout & seal shower tile | tile | work | 1 | 2 | 0 | master_bath Grout after set cures 1 day. | 2027-01-14 | 2027-01-14 | 2027-01-14 | 2027-01-14 | 0.5 | not_started |  | order.shower_glass FS 0 2027-01-15 2027-01-15 | tile.shower_set FS 1 | tile.shower_set FS 1 |
| flooring.install | interior_finishes | flooring | interior_finish | Install flooring | flooring | work | 3 | 2 | 1 | interior_finish 4L Flooring after paint phase 1 and shower substrate. | 2027-01-07 | 2027-01-11 | 2027-01-07 | 2027-01-21 | 10 | not_started |  | cabinets.install FS 0 2027-01-12 2027-01-12, electrical.finish FS 0 2027-01-12 2027-01-14, trim.install FS 0 2027-01-12 2027-01-15 | paint.phase_1 FS, tile.shower_substrate FS, checkpoint.flooring_arrived FS | tile.shower_substrate FS 0 |
| cabinets.install | interior_finishes | cabinets | master_bath | Install vanity | cabinets | work | 1 | 2 | 1 | master_bath Vanity install after flooring. | 2027-01-12 | 2027-01-12 | 2027-01-12 | 2027-01-27 | 11 | not_started |  |  | flooring.install FS, checkpoint.vanity_fixtures_arrived FS | flooring.install FS 0 |
| trim.install | interior_finishes | trim | interior_finish | Trim carpentry (base/case) | trim_carpentry | work | 4 | 2 | 1 | interior_finish 4L Trim after flooring. | 2027-01-12 | 2027-01-15 | 2027-01-12 | 2027-01-26 | 10 | not_started |  |  | flooring.install FS | flooring.install FS 0 |
| retrofit.hall_bath_window_infill | interior_finishes | hall_bath_mod | hall_bath_bedroom_closeout | Hall bath modifications (retrofit) | framing | work | 1 | 2 | 1 | hall_bath_bedroom_closeout retrofit-heuristic Hall bath not in addition objective (bedroom/bath/closet). Signal A retrofit. Runs parallel. | 2026-10-22 | 2026-10-22 | 2026-10-22 | 2027-01-29 | 64 | not_started |  |  | demo.haul_out FS | demo.haul_out FS 0 |
| retrofit.hallway_switch_relocate | interior_finishes | hall_bath_mod | electrical | Relocate hallway switch (drywall patch, prime, paint) | electrical | work | 1 | 2 | 1 | electrical retrofit-heuristic Hallway switch relocate is retrofit — hallway not in addition objective. | 2027-01-04 | 2027-01-04 | 2027-01-04 | 2027-01-29 | 19 | not_started |  |  | drywall.consolidated FS | drywall.consolidated FS 0 |
| electrical.finish | finish_trades | finish_electrical | electrical | Electrical finish (trim, devices, fixtures) | electrical | work | 3 | 2 | 1 | electrical 4L Electrical finish after paint phase 1. | 2027-01-12 | 2027-01-14 | 2027-01-12 | 2027-01-26 | 10 | not_started |  | hvac.minisplit_install FS 0 2027-01-15 2027-01-15 | paint.phase_1 FS, flooring.install FS | flooring.install FS 0 |
| plumbing.finish | finish_trades | finish_plumbing | plumbing | Plumbing finish (fixtures, sink hookup) | plumbing | work | 2 | 2 | 1 | plumbing 4L Plumbing finish after cabinets + tile grout + shower glass. | 2027-01-28 | 2027-01-29 | 2027-01-28 | 2027-01-28 | 0 | not_started |  | paint.phase_2 FS 0 2027-02-01 2027-02-02 | cabinets.install FS, flooring.install FS, tile.grout_seal FS, checkpoint.shower_glass_arrived FS | checkpoint.shower_glass_arrived FS 0 |
| hvac.minisplit_install | finish_trades | finish_hvac | hvac | Mini-split install | hvac | work | 1 | 1 | 1 | hvac 4N-stagger Mini-split install 1d/1 person; staggered after electrical finish per 2-trade cap. | 2027-01-15 | 2027-01-15 | 2027-01-15 | 2027-01-29 | 10 | not_started |  |  | paint.phase_1 FS, checkpoint.minisplit_arrived FS, electrical.finish FS | electrical.finish FS 0 |
| paint.phase_2 | interior_finishes | paint_phase2 | interior_finish | Paint phase 2 (final wall coat) | paint | work | 2 | 2 | 1 | interior_finish 4F Paint phase 2 gates on every finish trade. Substantial completion anchor. | 2027-02-01 | 2027-02-02 | 2027-02-01 | 2027-02-01 | 0 | not_started |  | milestone.substantial_completion FS 0 2027-02-03 2027-02-03 | trim.install FS, flooring.install FS, cabinets.install FS, tile.grout_seal FS, plumbing.finish FS, electrical.finish FS, hvac.minisplit_install FS, retrofit.hall_bath_window_infill FS, retrofit.hallway_switch_relocate FS | plumbing.finish FS 0 |
| milestone.substantial_completion | interior_finishes | paint_phase2 | interior_finish | Substantial completion | general | milestone | 0 | 0 | 0 | interior_finish 4F Substantial completion = paint phase 2 end. | 2027-02-03 | 2027-02-03 | 2027-02-03 | 2027-02-03 | 0 | not_started |  | closeout.pm_walkthrough FS 0 2027-02-03 2027-02-03 | paint.phase_2 FS | paint.phase_2 FS 0 |
| closeout.pm_walkthrough | closeout | punch_and_clean | hall_bath_bedroom_closeout | PM walkthrough & punch list | pm | work | 1 | 1 | 1 | hall_bath_bedroom_closeout PM walkthrough with client, produces punch list. | 2027-02-03 | 2027-02-03 | 2027-02-03 | 2027-02-03 | 0 | not_started |  | closeout.punch_work FS 0 2027-02-04 2027-02-05 | milestone.substantial_completion FS | milestone.substantial_completion FS 0 |
| closeout.punch_work | closeout | punch_and_clean | hall_bath_bedroom_closeout | Punch-list work (trade returns) | general | work | 2 | 2 | 1 | hall_bath_bedroom_closeout 1-3 days of trade returns for punch items. | 2027-02-04 | 2027-02-05 | 2027-02-04 | 2027-02-04 | 0 | not_started |  | closeout.final_clean FS 0 2027-02-08 2027-02-08 | closeout.pm_walkthrough FS | closeout.pm_walkthrough FS 0 |
| closeout.final_clean | closeout | punch_and_clean | hall_bath_bedroom_closeout | Final clean | cleanup | work | 1 | 2 | 0 | hall_bath_bedroom_closeout Whole-house final clean. | 2027-02-08 | 2027-02-08 | 2027-02-08 | 2027-02-08 | 0 | not_started |  | inspect.final_bundled FS 1 2027-02-10 2027-02-10 | closeout.punch_work FS | closeout.punch_work FS 0 |
| inspect.final_bundled | closeout | final_inspection | hall_bath_bedroom_closeout | Bundled final inspection (E/P/M + building) | inspector | inspection | 1 | 1 | 1 | hall_bath_bedroom_closeout 4M One inspector, one day for all finals. | 2027-02-10 | 2027-02-10 | 2027-02-10 | 2027-02-10 | 0 | not_started |  | closeout.wills_walkthrough FS 1 2027-02-12 2027-02-12 | closeout.final_clean FS 1 | closeout.final_clean FS 1 |
| closeout.wills_walkthrough | closeout | wills_walkthrough | hall_bath_bedroom_closeout | Owner final walkthrough with customer | general | work | 1 | 1 | 1 | hall_bath_bedroom_closeout addition-owner-walkthrough Owner's personal final touchpoint with customer, 1 working day after final inspection. | 2027-02-12 | 2027-02-12 | 2027-02-12 | 2027-02-12 | 0 | not_started |  |  | inspect.final_bundled FS 1 | inspect.final_bundled FS 1 |
